# Project MacOS

Schedule from MS Project, 2019-02-25 to 2019-04-26.

## Calendars

- Стандартный: Mon-Fri 09:00-13:00, 14:00-18:00; Sat-Sun off. Exceptions (off unless hours are given): 2019-02-25 to 2019-04-26 09:00-13:00, 14:00-18:00 (My).

## Resources

| Resource |
| --- |
| Stas Bespalov |
| Nikita Dik |

## Schedule

| ID | WBS | Task | Type | Duration | Start | Finish | Predecessors | Constraint | Resources | Work |
| --- | --- | --- | --- | --- | --- | --- | --- | --- | --- | --- |
| 1 | 1 | **MacOS Stream** |  | 60.5d | 2019-02-25 18:00 | 2019-04-26 22:00 |  |  |  | 1001.37h |
| 2 | 1.1 | Research | manual | 22d | 2019-02-26 16:00 | 2019-03-20 16:00 |  | start no earlier than 2019-02-26 16:00 | Nikita Dik; Stas Bespalov | 270.62h |
| 3 | 1.2 | Prototype | manual | 3.5d | 2019-03-21 08:00 | 2019-03-24 12:00 | 2 | start no earlier than 2019-03-21 08:00 | Nikita Dik; Stas Bespalov | 30h |
| 4 | 1.3 | **Development** |  | 21d | 2019-03-25 09:00 | 2019-04-14 18:00 | 3 |  |  | 196.75h |
| 5 | 1.3.1 | **Control** |  | 7.88d | 2019-03-25 11:00 | 2019-04-01 19:00 |  |  |  | 46.8h |
| 6 | 1.3.1.1 | Receiving commands on ios | manual | 5d | 2019-03-25 06:00 | 2019-03-29 05:00 |  |  | Stas Bespalov | 24.6h |
| 7 | 1.3.1.2 | Command implementation | manual | 2.5d | 2019-03-29 16:00 | 2019-04-01 11:00 | 6 |  | Stas Bespalov | 15.2h |
| 8 | 1.3.1.3 | Code review | manual | 0.38d | 2019-04-01 08:00 | 2019-04-01 11:00 |  |  | Nikita Dik | 3h |
| 9 | 1.3.1.4 | Correction after review | manual | 0.5d | 2019-04-01 14:00 | 2019-04-01 18:00 |  |  | Stas Bespalov | 4h |
| 10 | 1.3.2 | **data transfer** |  | 10.62d | 2019-03-25 18:00 | 2019-04-05 15:00 |  |  |  | 80h |
| 11 | 1.3.2.1 | Server | manual | 6d | 2019-03-25 18:00 | 2019-03-31 18:00 |  |  | Nikita Dik | 48h |
| 12 | 1.3.2.2 | Client | manual | 3d | 2019-04-01 12:00 | 2019-04-04 12:00 |  |  | Nikita Dik | 24h |
| 13 | 1.3.2.3 | code review | manual | 0.5d | 2019-04-04 18:00 | 2019-04-04 22:00 |  | start no earlier than 2019-04-04 18:00 | Stas Bespalov | 4h |
| 14 | 1.3.2.4 | Correction after review | manual | 0.5d | 2019-04-04 18:00 | 2019-04-05 13:00 |  |  | Nikita Dik | 4h |
| 15 | 1.3.3 | **Stream Display** |  | 9d | 2019-04-05 18:00 | 2019-04-14 18:00 |  |  |  | 63.45h |
| 16 | 1.3.3.1 | Image Recorder + scaling | manual | 0.5d | 2019-04-05 18:00 | 2019-04-05 22:00 |  |  | Nikita Dik | 4h |
| 17 | 1.3.3.2 | [OPTIONAL] Encode stream | manual | 2.93d | 2019-04-06 09:21 | 2019-04-08 17:48 |  |  | Nikita Dik | 23.45h |
| 18 | 1.3.3.3 | Video display | manual | 2d | 2019-04-08 17:48 | 2019-04-10 17:48 | 17 |  | Nikita Dik | 16h |
| 19 | 1.3.3.4 | code review | manual | 0.5d | 2019-04-11 18:00 | 2019-04-11 22:00 |  |  | Stas Bespalov | 4h |
| 20 | 1.3.3.5 | Correction after review | manual | 2d | 2019-04-12 18:00 | 2019-04-14 18:00 |  |  | Nikita Dik | 16h |
| 21 | 1.3.4 | User Interface | manual | 2.5d | 2019-04-03 18:00 | 2019-04-06 13:00 | 5 |  | Stas Bespalov | 6.5h |
| 22 | 1.4 | **Testing** |  | 12.5d | 2019-04-07 05:00 | 2019-04-18 18:00 | 21, 18 |  |  | 504h |
| 23 | 1.4.1 | testing project | manual | 0.5d | 2019-04-07 05:00 | 2019-04-07 13:00 |  |  | Nikita Dik; Stas Bespalov | 8h |
| 24 | 1.4.2 | fix bug | manual | 0.5d | 2019-04-07 05:00 | 2019-04-07 13:00 |  |  | Nikita Dik; Stas Bespalov | 8h |
| 25 | 1.4.3 | unit_test | manual | 8.5d | 2019-04-07 05:00 | 2019-04-14 18:00 |  |  | Nikita Dik; Stas Bespalov | 112h |
| 26 | 1.4.4 | docudocumentation | manual | 12.5d | 2019-04-07 05:00 | 2019-04-18 18:00 |  |  | Nikita Dik; Stas Bespalov | 192h |
| 27 | 1.4.5 | Presentation | manual | 12.5d | 2019-04-07 05:00 | 2019-04-18 18:00 | 21 |  | Nikita Dik; Stas Bespalov | 184h |
| 28 | 2 | general refinement | manual | 7d | 2019-04-18 09:00 | 2019-04-24 18:00 |  |  | Nikita Dik; Stas Bespalov | 28h |
